# WebSite Development

Schedule from MS Project XML, 2004-01-01 to 2004-02-17.

## Calendars

- Standard: Mon-Fri 08:00-12:00, 13:00-17:00; Sat-Sun off.

## Resources

| Resource |
| --- |
| Management |
| Project manager |
| Analyst |
| Developer |
| Testers |
| Trainers |
| Technical communicators |
| Deployment team |
| Tech Writer |

## Schedule

| ID | WBS | Task | Type | Duration | Start | Finish | Predecessors | Total slack | Resources | Work |
| --- | --- | --- | --- | --- | --- | --- | --- | --- | --- | --- |
| 1 | 1 | **Scope** |  | 2.5d | 2004-01-01 | 2004-01-05 |  | 0d |  | 28h |
| 2 | 1.1 | Verify/Secure project sponsorship |  | 1d | 2004-01-01 | 2004-01-01 |  | 0d | Management | 8h |
| 3 | 1.2 | Determine project scope |  | 4h | 2004-01-01 | 2004-01-01 |  | 0d | Management | 4h |
| 4 | 1.3 | Define preliminary resources |  | 1d | 2004-01-01 | 2004-01-02 | 3 | 0d | Project manager | 8h |
| 5 | 1.4 | Secure core resources |  | 1d | 2004-01-02 | 2004-01-05 | 4 | 0d | Project manager | 8h |
| 6 | 1.5 | Scope complete | milestone | 0d | 2004-01-05 | 2004-01-05 | 5 | 0d |  |  |
| 7 | 2 | **Analysis/Website Requirements** |  | 6d? | 2004-01-01 | 2004-01-08 |  | 0d |  | 192h |
| 8 | 2.1 | **Conduct needs analysis** |  | 2d? | 2004-01-05 | 2004-01-07 | 6 | 0d | Analyst | 128h |
| 9 | 2.1.1 | **Client Workbook** |  | 2d? | 2004-01-05 | 2004-01-07 |  | 0d | Project manager | 32h |
| 10 | 2.1.1.1 | Client Survey |  | 1d? | 2004-01-05 | 2004-01-06 |  | 0d |  |  |
| 11 | 2.1.1.2 | Maintenance Survey |  | 2d | 2004-01-05 | 2004-01-07 |  | 0d | Project manager | 16h |
| 12 | 2.1.2 | Review Client Information |  | 2d | 2004-01-05 | 2004-01-07 |  | 0d | Deployment team; Project manager | 32h |
| 13 | 2.1.3 | **Client Workbook Conclusion** |  | 2d | 2004-01-05 | 2004-01-07 |  | 0d | Project manager | 48h |
| 14 | 2.1.3.1 | Expanded Technical Check |  | 2d | 2004-01-05 | 2004-01-07 |  | 0d | Project manager; Deployment team | 32h |
| 15 | 2.2 | Draft preliminary Website specifications |  | 1d | 2004-01-01 | 2004-01-01 |  | 0d | Analyst | 8h |
| 16 | 2.3 | Develop preliminary budget or time |  | 2d | 2004-01-01 | 2004-01-02 |  | 0d | Project manager | 16h |
| 17 | 2.4 | Review Website specifications/budget with team |  | 4h | 2004-01-05 | 2004-01-05 | 16 | 0d | Project manager; Analyst | 8h |
| 18 | 2.5 | Incorporate feedback on Website specifications |  | 1d | 2004-01-05 | 2004-01-06 | 17 | 0d | Analyst | 8h |
| 19 | 2.6 | Develop delivery timeline |  | 1d | 2004-01-06 | 2004-01-07 | 18 | 0d | Project manager | 8h |
| 20 | 2.7 | Obtain approvals to proceed (concept, timeline, budget) |  | 4h | 2004-01-07 | 2004-01-07 | 19 | 0d | Management; Project manager | 8h |
| 21 | 2.8 | Secure required resources |  | 1d | 2004-01-08 | 2004-01-08 | 20 | 0d | Project manager | 8h |
| 22 | 2.9 | Analysis complete | milestone | 0d | 2004-01-08 | 2004-01-08 | 21 | 0d |  |  |
| 23 | 3 | **Design** |  | 27.5d? | 2004-01-09 | 2004-02-17 |  | 0d |  | 224h |
| 24 | 3.1 | Review preliminary website specifications |  | 2d | 2004-01-09 | 2004-01-12 | 22 | 0d | Analyst | 16h |
| 25 | 3.2 | Develop design specifications |  | 5d | 2004-01-13 | 2004-01-19 | 24 | 0d | Analyst | 40h |
| 26 | 3.3 | Have Technical Writer Engage Customer on Content |  | 5d? | 2004-01-20 | 2004-01-26 | 25 | 0d | Tech Writer | 40h |
| 27 | 3.4 | Develop prototype based on design specifications |  | 4d | 2004-01-27 | 2004-01-30 | 26 | 0d | Analyst | 32h |
| 28 | 3.5 | Meta Data Build/Implementation |  | 3d | 2004-02-02 | 2004-02-04 | 27 | 0d | Developer | 24h |
| 29 | 3.6 | Usability Testing |  | 5d | 2004-02-05 | 2004-02-11 | 28 | 0d | Testers | 40h |
| 30 | 3.7 | Review design specifications |  | 2d | 2004-02-12 | 2004-02-13 | 29 | 0d | Management | 16h |
| 31 | 3.8 | Incorporate feedback into design specifications |  | 1d | 2004-02-16 | 2004-02-16 | 30 | 0d | Management | 8h |
| 32 | 3.9 | Obtain approval to proceed |  | 4h | 2004-02-17 | 2004-02-17 | 31 | 0d | Management; Project manager | 8h |
| 33 | 3.10 | Design complete | milestone | 0d | 2004-02-17 | 2004-02-17 | 32 | 0d |  |  |

| ID | WBS | Task | Type | Duration | Start | Finish | Predecessors | Total slack | Resources | Work |
| --- | --- | --- | --- | --- | --- | --- | --- | --- | --- | --- |
| 34 | 4 | **Pilot (Optional)** |  | 9d | 2004-01-09 | 2004-01-21 |  | 0d |  | 64h |
| 35 | 4.1 | Identify review group |  | 1d | 2004-01-09 | 2004-01-09 | 22 | 0d | Project manager | 8h |
| 36 | 4.2 | Develop Website delivery mechanism |  | 1d | 2004-01-12 | 2004-01-12 | 35 | 0d |  |  |
| 37 | 4.3 | Role out Website |  | 1d | 2004-01-13 | 2004-01-13 | 36 | 0d | Deployment team | 8h |
| 38 | 4.4 | Obtain user feedback |  | 1w | 2004-01-14 | 2004-01-20 | 37 | 0d | Deployment team | 40h |
| 39 | 4.5 | Evaluate review information |  | 1d | 2004-01-21 | 2004-01-21 | 38 | 0d | Deployment team | 8h |
| 40 | 4.6 | Pilot complete | milestone | 0d | 2004-01-21 | 2004-01-21 | 39 | 0d |  |  |
| 41 | 5 | **Deployment** |  | 4d | 2004-01-22 | 2004-01-27 |  | 0d |  | 32h |
| 42 | 5.1 | Determine final role out strategy |  | 1d | 2004-01-22 | 2004-01-22 | 40 | 0d | Deployment team | 8h |
| 43 | 5.2 | Develop role out methodology |  | 1d | 2004-01-23 | 2004-01-23 | 42 | 0d | Deployment team | 8h |
| 44 | 5.3 | Identify and assign owner for role out |  | 1d | 2004-01-26 | 2004-01-26 | 43 | 0d | Deployment team | 8h |
| 45 | 5.4 | Role out Website |  | 1d | 2004-01-27 | 2004-01-27 | 44 | 0d | Deployment team | 8h |
| 46 | 5.5 | Role out complete | milestone | 0d | 2004-01-27 | 2004-01-27 | 45 | 0d |  |  |
| 47 | 6 | **Post Implementation Review** |  | 2d | 2004-01-28 | 2004-01-29 |  | 0d |  | 16h |
| 48 | 6.1 | Document lessons learned |  | 1d | 2004-01-28 | 2004-01-28 | 46 | 0d | Project manager | 8h |
| 49 | 6.2 | Create Website maintenance team |  | 1d | 2004-01-29 | 2004-01-29 | 48 | 0d | Project manager | 8h |
| 50 | 6.3 | Post implementation review complete | milestone | 0d | 2004-01-29 | 2004-01-29 | 49 | 0d |  |  |
